# PortalClientes - Plan de Trabajo v1.0

Schedule from MS Project, 2019-05-20 to 2019-07-16, status date 2019-06-02, A marks actual dates.

## Calendars

- Standard: Mon-Fri 08:00-18:00; Sat-Sun off.

## Resources

| Resource | Group |
| --- | --- |
| PM | Andrade |
| Emiliano Damazo | Wayssen |
| Luis García | Andrade |

## Schedule

| ID | WBS | Task | Duration | Start | Finish | Predecessors | Complete | Remaining | Total slack | Free slack | Constraint | Resources | Work | Actual work |
| --- | --- | --- | --- | --- | --- | --- | --- | --- | --- | --- | --- | --- | --- | --- |
| 1 | 1 | **Portal de Trámites** | 52.5d? | 2019-05-20 A | 2019-07-16 |  | 32% | 35.92d? | 0d |  |  |  | 234h | 84h |
| 2 | 1.1 | **1. Análisis** | 4.88d? | 2019-05-20 A | 2019-05-23 A |  | 100% |  |  |  |  |  | 32h | 32h |
| 3 | 1.1.1 | Analisis del documento de requerimientos | 1d? | 2019-05-20 A | 2019-05-20 A |  | 100% |  |  |  | start no earlier than 2019-05-20 | PM | 8h | 8h |
| 4 | 1.1.2 | Creación de Backlog y Casos de usos | 1d? | 2019-05-21 A | 2019-05-21 A | 3 | 100% |  |  |  |  | PM | 8h | 8h |
| 5 | 1.1.3 | Diagrama de flujo de comunicación de la solución | 1d? | 2019-05-22 A | 2019-05-22 A | 4 | 100% |  |  |  |  | PM | 8h | 8h |
| 6 | 1.1.4 | Elaboración del documento de visión y alcance | 1d | 2019-05-23 A | 2019-05-23 A | 4 | 100% |  |  |  | start no earlier than 2019-05-23 | PM | 8h | 8h |
| 7 | 1.2 | **2. Diseño** | 3.62d? | 2019-05-24 A | 2019-05-28 A |  | 100% |  |  |  |  |  | 40h | 40h |
| 8 | 1.2.1 | Diseño de una propuesta de solución (Mockup) | 2d? | 2019-05-24 A | 2019-05-27 A | 6 | 100% |  |  |  | start no earlier than 2019-05-23 | Luis García | 16h | 16h |
| 9 | 1.2.2 | Sesiones de entendimiento con el equipo de GA | 1d? | 2019-05-28 A | 2019-05-28 A | 8 | 100% |  |  |  | finish no earlier than 2019-05-27 | PM | 8h | 8h |
| 10 | 1.2.3 | Elaboración y envío de la minuta | 1d? | 2019-05-28 A | 2019-05-28 A | 8 | 100% |  |  |  | start no earlier than 2019-05-27 | PM | 8h | 8h |
| 11 | 1.2.4 | Elaboración de la carta de inicio del proyecto y gestión de firmas | 1d? | 2019-05-28 A | 2019-05-28 A | 8 | 100% |  |  |  | start no earlier than 2019-05-27 | PM | 8h | 8h |
| 12 | 1.3 | **3. Construcción** | 20.62d? | 2019-05-29 A | 2019-06-20 |  | 10% | 18.6d? | 23.12d |  |  |  | 122h | 12h |
| 13 | 1.3.1 | **Componentes Pricipales** | 20.62d? | 2019-05-29 A | 2019-06-20 |  | 10% | 18.6d? | 23.12d |  |  |  | 122h | 12h |
| 14 | 1.3.1.1 | **Base de Datos** | 1.75d? | 2019-05-29 A | 2019-05-30 A |  | 100% |  |  |  |  |  | 12h | 12h |
| 15 | 1.3.1.1.1 | Creación de base de datos | 1.5d? | 2019-05-29 A | 2019-05-30 A | 11 | 100% |  |  |  | finish no earlier than 2019-05-30 | Luis García | 12h | 12h |
| 16 | 1.3.1.2 | **Estructura Proyecto** | 1.75d? | 2019-06-03 | 2019-06-04 |  |  |  | 35d |  |  |  | 14h |  |
| 17 | 1.3.1.2.1 | Solución base del proyecto | 1.5d? | 2019-06-03 | 2019-06-04 | 15 |  |  | 22.25d | 0d | start no earlier than 2019-06-03 | Luis García | 12h |  |
| 18 | 1.3.1.2.2 | Panel aplicaciones | 0.25d? | 2019-06-04 | 2019-06-04 | 17 |  |  | 38.25d |  |  | Luis García | 2h |  |
| 19 | 1.3.1.3 | **Documentos** | 1.5d | 2019-06-05 | 2019-06-06 |  |  |  | 34d |  |  |  | 12h |  |
| 20 | 1.3.1.3.1 | Alta Documentos | 1.5d | 2019-06-05 | 2019-06-06 | 17 |  |  | 34d | 0d | start no earlier than 2019-06-05 | Luis García | 12h |  |
| 21 | 1.3.1.4 | **Trámites** | 2d? | 2019-06-06 | 2019-06-07 |  |  |  | 34d |  |  |  | 16h |  |
| 22 | 1.3.1.4.1 | Alta de Trámites | 2d? | 2019-06-06 | 2019-06-07 | 20 |  |  | 34d |  | start no earlier than 2019-05-31 | Luis García | 16h |  |
| 23 | 1.3.1.5 | **API** | 5.25d? | 2019-06-10 | 2019-06-14 |  |  |  | 19.5d |  |  |  | 36h |  |
| 24 | 1.3.1.5.1 | Solicitud de documentos | 1.5d? | 2019-06-10 | 2019-06-11 |  |  |  | 20.25d | 0d | start no earlier than 2019-06-10 | Luis García | 12h |  |
| 25 | 1.3.1.5.2 | Asignación de documentos | 1.5d? | 2019-06-11 | 2019-06-12 | 24 |  |  | 20.25d | 0d |  | Luis García | 12h |  |
| 26 | 1.3.1.5.3 | Estatus de documentos | 1.5d | 2019-06-13 | 2019-06-14 | 25 |  |  | 19.5d | 0d | start no earlier than 2019-06-13 | Luis García | 12h |  |

| ID | WBS | Task | Duration | Start | Finish | Predecessors | Total slack | Free slack | Constraint | Resources | Work |
| --- | --- | --- | --- | --- | --- | --- | --- | --- | --- | --- | --- |
| 27 | 1.3.1.6 | **Autorizaciones** | 2d | 2019-06-17 | 2019-06-18 |  | 23.12d |  |  |  | 16h |
| 28 | 1.3.1.6.1 | Autorizacion Trámites y Documentos | 2d | 2019-06-17 | 2019-06-18 | 26 | 23.12d | 0d | finish no earlier than 2019-06-18 | Luis García | 16h |
| 29 | 1.3.1.7 | **WorkSpace Faltantes** | 2d? | 2019-06-18 | 2019-06-20 |  | 23.12d |  |  |  | 16h |
| 30 | 1.3.1.7.1 | Validación de Documentos | 2d? | 2019-06-18 | 2019-06-20 | 28 | 23.12d |  | finish no earlier than 2019-06-03 | Luis García | 16h |
| 31 | 1.4 | **4. Pruebas** | 26.5d? | 2019-06-14 | 2019-07-15 |  | 0d |  |  |  | 24h |
| 32 | 1.4.1 | **Pruebas QA** | 4d | 2019-06-14 | 2019-06-19 |  | 19.5d |  |  |  |  |
| 33 | 1.4.1.1 | Instalación y validación del ambiente QA | 1d | 2019-06-14 | 2019-06-14 | 26 | 19.5d | 0d |  |  |  |
| 34 | 1.4.1.2 | Ciclo 1 | 2d | 2019-06-17 | 2019-06-18 | 33 | 19.5d | 0d |  |  |  |
| 35 | 1.4.1.3 | Atencion a hallazgos | 1d | 2019-06-18 | 2019-06-19 | 34 | 19.5d |  |  |  |  |
| 36 | 1.4.2 | **Pruebas de vulnerabilidad** | 2d? | 2019-07-11 | 2019-07-12 |  | 0d |  |  |  | 16h |
| 37 | 1.4.2.1 | Ciclo 1 | 1d? | 2019-07-11 | 2019-07-11 | 35 | 0d |  | start no earlier than 2019-07-11 |  | 8h |
| 38 | 1.4.2.2 | Atencion a hallazgos | 0.5d | 2019-07-11 | 2019-07-12 | 37 | 0d |  |  |  | 4h |
| 39 | 1.4.2.3 | Elaborar reporte de pruebas de vulnerabilidad | 0.5d | 2019-07-12 | 2019-07-12 | 38 | 0d |  | start no earlier than 2019-07-12 |  | 4h |
| 40 | 1.4.3 | **Pruebas de estres** | 1d | 2019-07-12 | 2019-07-15 |  | 0d |  |  |  | 8h |
| 41 | 1.4.3.1 | Elaborar reporte de pruebas de estres | 1d | 2019-07-12 | 2019-07-15 | 39 | 0d |  | finish no earlier than 2019-07-04 |  | 8h |
| 42 | 1.5 | **5. Liberación** | 2d | 2019-07-15 | 2019-07-16 |  | 0d |  |  |  | 16h |
| 43 | 1.5.1 | **Instalación PROD** | 1d | 2019-07-15 | 2019-07-16 |  | 0d |  |  |  | 8h |
| 44 | 1.5.1.1 | VoBo Cliente Liberación | 0.5d | 2019-07-15 | 2019-07-15 | 41 | 0d |  | finish no earlier than 2019-07-04 |  | 4h |
| 45 | 1.5.1.2 | Ambientación e Instalación productiva | 0.5d | 2019-07-15 | 2019-07-16 | 44 | 0d |  | finish no earlier than 2019-07-04 |  | 4h |
| 46 | 1.5.2 | **Documentación** | 1d | 2019-07-16 | 2019-07-16 |  | 0d |  |  |  | 8h |
| 47 | 1.5.2.1 | 1. Manual de instalación | 0.5d | 2019-07-16 | 2019-07-16 | 45 | 0d |  | finish no earlier than 2019-07-04 |  | 4h |
| 48 | 1.5.2.2 | 2. Manual de compilación | 0.25d | 2019-07-16 | 2019-07-16 | 47 | 0d |  | finish no earlier than 2019-07-04 |  | 2h |
| 49 | 1.5.2.3 | 3. Manual de Usuario | 0.25d | 2019-07-16 | 2019-07-16 | 48 | 0d |  | finish no earlier than 2019-07-04 |  | 2h |
